# Automated Conveyor Belt

How a schedule from MS Project changed from version to version. A marks actual dates.

## Version 1 (saved 2023-03-23, file G12_GPPart 2_Question 1.mpp)

Note of the change: agile project management project

| ID | Task | Duration | Start | Finish | Predecessors | Total float | Constraint |
| --- | --- | --- | --- | --- | --- | --- | --- |
| 1 | System architecture | 40d | 2024-01-01 | 2024-02-09 |  | 0d |  |
| 2 | Hardware specifications | 50d | 2024-02-10 | 2024-03-30 | 1 | 0d | must start on 2024-02-10 |
| 3 | Kernel specifications | 20d | 2024-02-10 | 2024-02-29 | 1 | 0d | must start on 2024-02-10 |
| 4 | Utilities Specification | 25d | 2024-02-10 | 2024-03-05 | 1 | 0d | must start on 2024-02-10 |
| 5 | Hardware Design | 23.33d | 2024-04-25 | 2024-05-18 | 2 | 37d |  |
| 6 | Disk drivers | 90d | 2024-03-26 | 2024-06-24 | 3 | 19.67d |  |
| 7 | Memory management | 37d | 2024-05-18 | 2024-06-23 | 3 | 20d |  |
| 8 | Operating system documentation | 15d | 2024-03-06 | 2024-03-21 | 3 | 114.67d |  |
| 9 | Routine utilities | 56d | 2024-05-19 | 2024-07-13 | 4 | 0d |  |
| 10 | Complex utilities | 45d | 2024-05-19 | 2024-07-02 | 4 | 11d |  |
| 11 | Utilities documentation | 10d | 2024-05-18 | 2024-05-27 | 4 | 47d |  |
| 12 | Hardware documentation | 10d | 2024-05-28 | 2024-06-06 | 5 | 37d |  |
| 13 | Integration first phase | 3d | 2024-07-14 | 2024-07-16 | 6, 7, 8, 9, 10, 11, 12 | 0d |  |
| 14 | Prototypes | 32d | 2024-07-17 | 2024-08-17 | 13 | 10d |  |
| 15 | Serial I/O drivers | 42d | 2024-07-17 | 2024-08-27 | 13 | 0d |  |
| 16 | System hard/software test | 7d | 2024-08-28 | 2024-09-03 | 14, 15 | 0d |  |
| 17 | Order printed circuit boards | 5d | 2024-09-04 | 2024-09-08 | 16 | 5d |  |
| 18 | Network interface | 8.33d | 2024-09-25 | 2024-10-03 | 16 | 0d |  |
| 19 | Shell | 20d | 2024-09-04 | 2024-09-23 | 16 | 10d |  |
| 20 | Project documentation | 20d | 2024-09-04 | 2024-09-23 | 16 | 10d |  |
| 21 | Assemble preproduction | 15d | 2024-09-14 | 2024-09-28 | 17FS+5d | 5d |  |
| 22 | Integrated acceptance test | 20d | 2024-10-04 | 2024-10-23 | 18, 19, 20, 21 | 0d |  |

## Version 2 (data date 2024-03-31, saved 2023-03-23, file G12-_GPPart 2_Question 2 .mpp)

Note of the change: agile project management project

Last finish 2024-10-23 → 2024-11-11 (+19d). Complete tasks 0 → 1.

Changed:

| ID | Task | Start | Finish | Duration | Complete | Total float | Other |
| --- | --- | --- | --- | --- | --- | --- | --- |
| 1 | System architecture | 2024-01-01 A | 2024-02-09 A |  | 0% → 100% | 0d → none | baseline start none → 2024-01-01; baseline finish none → 2024-02-09 |
| 2 | Hardware specifications | 2024-02-10 A | 2024-03-30 → 2024-04-08 (+9d) | 50d → 59d | 0% → 32% |  | baseline start none → 2024-02-10; baseline finish none → 2024-03-30 |
| 3 | Kernel specifications | 2024-02-10 A | 2024-02-29 → 2024-03-09 (+9d) | 20d → 29d | 0% → 66% |  | baseline start none → 2024-02-10; baseline finish none → 2024-02-29 |
| 4 | Utilities Specification | 2024-02-10 A | 2024-03-05 → 2024-03-19 (+14d) | 25d → 39d | 0% → 49% |  | baseline start none → 2024-02-10; baseline finish none → 2024-03-05 |
| 5 | Hardware Design | 2024-04-25 → 2024-04-09 (-16d) | 2024-05-18 → 2024-05-02 (-16d) |  |  | 37d → 80d | baseline start none → 2024-04-25; baseline finish none → 2024-05-18 |
| 6 | Disk drivers | 2024-03-26 → 2024-05-02 (+37d) | 2024-06-24 → 2024-07-31 (+37d) |  |  | 19.67d → 0d | baseline start none → 2024-03-26; baseline finish none → 2024-06-24 |
| 7 | Memory management | 2024-05-18 → 2024-05-31 (+13d) | 2024-06-23 → 2024-07-06 (+13d) |  |  | 20d → 24.33d | baseline start none → 2024-05-18; baseline finish none → 2024-06-23 |
| 8 | Operating system documentation | 2024-03-06 → 2024-03-14 (+8d) | 2024-03-21 → 2024-03-29 (+8d) |  |  | 114.67d → 123.67d | baseline start none → 2024-03-06; baseline finish none → 2024-03-21 |
| 9 | Routine utilities | 2024-05-19 → 2024-06-02 (+14d) | 2024-07-13 → 2024-07-27 (+14d) |  |  | 0d → 3.33d | baseline start none → 2024-05-19; baseline finish none → 2024-07-13 |
| 10 | Complex utilities | 2024-05-19 → 2024-06-02 (+14d) | 2024-07-02 → 2024-07-16 (+14d) |  |  | 11d → 14.33d | baseline start none → 2024-05-19; baseline finish none → 2024-07-02 |
| 11 | Utilities documentation | 2024-05-18 → 2024-03-29 (-50d) | 2024-05-27 → 2024-04-08 (-49d) |  |  | 47d → 113.67d | baseline start none → 2024-05-18; baseline finish none → 2024-05-27 |
| 12 | Hardware documentation | 2024-05-28 → 2024-05-02 (-26d) | 2024-06-06 → 2024-05-12 (-25d) |  |  | 37d → 80d | baseline start none → 2024-05-28; baseline finish none → 2024-06-06 |
| 13 | Integration first phase | 2024-07-14 → 2024-07-31 (+17d) | 2024-07-16 → 2024-08-03 (+18d) |  |  |  | baseline start none → 2024-07-14; baseline finish none → 2024-07-16 |
| 14 | Prototypes | 2024-07-17 → 2024-08-03 (+17d) | 2024-08-17 → 2024-09-04 (+18d) |  |  |  | baseline start none → 2024-07-17; baseline finish none → 2024-08-17 |
| 15 | Serial I/O drivers | 2024-07-17 → 2024-08-03 (+17d) | 2024-08-27 → 2024-09-14 (+18d) |  |  |  | baseline start none → 2024-07-17; baseline finish none → 2024-08-27 |
| 16 | System hard/software test | 2024-08-28 → 2024-09-14 (+17d) | 2024-09-03 → 2024-09-21 (+18d) |  |  |  | baseline start none → 2024-08-28; baseline finish none → 2024-09-03 |
| 17 | Order printed circuit boards | 2024-09-04 → 2024-09-21 (+17d) | 2024-09-08 → 2024-09-26 (+18d) |  |  | 5d → 6.11d | baseline start none → 2024-09-04; baseline finish none → 2024-09-08 |
| 18 | Network interface | 2024-09-25 → 2024-10-14 (+19d) | 2024-10-03 → 2024-10-22 (+19d) |  |  |  | baseline start none → 2024-09-25; baseline finish none → 2024-10-03 |
| 19 | Shell | 2024-09-04 → 2024-09-21 (+17d) | 2024-09-23 → 2024-10-11 (+18d) |  |  | 10d → 11.11d | baseline start none → 2024-09-04; baseline finish none → 2024-09-23 |
| 20 | Project documentation | 2024-09-04 → 2024-09-21 (+17d) | 2024-09-23 → 2024-10-11 (+18d) |  |  | 10d → 11.11d | baseline start none → 2024-09-04; baseline finish none → 2024-09-23 |
| 21 | Assemble preproduction | 2024-09-14 → 2024-10-01 (+17d) | 2024-09-28 → 2024-10-16 (+18d) |  |  | 5d → 6.11d | baseline start none → 2024-09-14; baseline finish none → 2024-09-28 |
| 22 | Integrated acceptance test | 2024-10-04 → 2024-10-22 (+18d) | 2024-10-23 → 2024-11-11 (+19d) |  |  |  | baseline start none → 2024-10-04; baseline finish none → 2024-10-23 |
